# ESD 改版

Schedule from a web Gantt chart, 2025-10-28 to 2026-01-21.
Every day is a working day

## Schedule

| ID | WBS | Task | Duration | Start | Finish | Predecessors | Status |
| --- | --- | --- | --- | --- | --- | --- | --- |
| 2 | 1 | Kickoff | 1d | 2025-10-28 | 2025-10-28 |  |  |
| 3 | 2 | Mask in | 12d | 2025-10-30 | 2025-11-10 |  |  |
| 4 | 3 | Qual. lot | 72d | 2025-11-11 | 2026-01-21 |  |  |
| 5 | 4 | WAFER PROCESS | 28d | 2025-11-11 | 2025-12-08 |  |  |
| 6 | 5 | PKG+FT | 31d | 2025-12-08 | 2026-01-07 |  |  |
| 7 | 6 | Bench test | 14d | 2026-01-08 | 2026-01-21 | 6 | waiting |
| 8 | 7 | RE168 | 14d | 2026-01-08 | 2026-01-21 | 6 | waiting |
| 9 | 8 | AE 验证 | 14d | 2026-01-08 | 2026-01-21 | 6 | waiting |
